# 墨西哥工厂IT系统实施 2023

Schedule from a web Gantt chart, 2023-05-31 to 2024-07-31.
Saturdays and Sundays are off

## Schedule

| ID | WBS | Task | Type | Duration | Start | Finish | Predecessors | Complete | Status |
| --- | --- | --- | --- | --- | --- | --- | --- | --- | --- |
| 2 | 1 | **厂房购置** |  | 136d | 2023-06-20 | 2023-12-26 |  | 85% | done |
| 3 | 1.1 | 厂房意向书签署 |  | 106d | 2023-06-20 | 2023-11-14 |  | 100% | done |
| 4 | 1.2 | 卖方终止当前租赁 |  | 30d | 2023-11-15 | 2023-12-26 | 3 | 100% | done |
| 5 | 2 | 公司注册 | fixed end | 106d | 2023-05-31 | 2023-10-25 |  | 100% | done |
| 6 | 3 | 互联网出口 |  | 159d | 2023-09-20 | 2024-04-29 |  | 100% | done |
| 7 | 4 | 专线互联互通 |  | 159d | 2023-09-20 | 2024-04-29 |  | 100% | done |
| 8 | 5 | ERP系统实施 |  | 177d | 2023-10-26 | 2024-06-28 | 5 | 100% | done |
| 9 | 6 | 弱电需求调研 |  | 21d | 2023-06-20 | 2023-07-18 |  | 100% | done |
| 10 | 7 | 弱电方案设计 |  | 28d | 2023-07-19 | 2023-08-25 | 9 | 100% | done |
| 11 | 8 | **弱电物料采购** |  | 199d | 2023-08-28 | 2024-05-30 |  | 100% | done |
| 12 | 8.1 | 弱电有源物料（机房设备，含服务器） |  | 169d | 2023-08-28 | 2024-04-18 | 10 | 100% | done |
| 13 | 8.2 | 弱电无源物料（综合布线） |  | 169d | 2023-08-28 | 2024-04-18 | 10 | 100% | done |
| 14 | 8.3 | 终端设备采购(PDA 电脑 打印机 扫码枪) |  | 30d | 2024-04-19 | 2024-05-30 | 12 | 100% | done |
| 15 | 9 | **设备安装调测** |  | 58d | 2024-04-19 | 2024-07-09 |  | 90% |  |
| 16 | 9.1 | 数据中心/机房设备安装 |  | 28d | 2024-04-19 | 2024-05-28 | 12 | 100% | done |
| 17 | 9.2 | 弱电综合布线 |  | 58d | 2024-04-19 | 2024-07-09 | 12 | 90% |  |
| 18 | 9.3 | 接入层网络安装调测 |  | 28d | 2024-05-29 | 2024-07-05 | 16 | 80% |  |
| 19 | 10 | **本地IT招聘及培训** |  | 120d | 2023-09-25 | 2024-03-08 |  | 100% | done |
| 20 | 10.1 | 本地IT招聘 |  | 60d | 2023-09-25 | 2023-12-15 |  | 100% | done |
| 21 | 10.2 | 本地IT培训 |  | 60d | 2023-12-18 | 2024-03-08 | 20 | 100% | done |
| 22 | 11 | **CIP系统实施** |  | 72d | 2024-04-23 | 2024-07-31 |  | 46% |  |
| 23 | 11.1 | CIP系统安装 |  | 7d | 2024-04-23 | 2024-05-01 |  | 100% | done |
| 24 | 11.2 | CIP功能实施 |  | 65d | 2024-05-02 | 2024-07-31 | 23 | 60% |  |
| 25 | 11.3 | 数据采集实施 |  | 48d | 2024-04-23 | 2024-06-27 |  | 20% |  |
| 26 | 12 | WMS系统实施 |  | 39d | 2024-04-24 | 2024-06-17 |  | 70% |  |
| 27 | 13 | 试生产 | fixed start | 1d | 2024-04-30 | 2024-04-30 |  | 100% | done |

Notes:
- 3: 关键假设
- 5: 关键假设

| ID | WBS | Task | Duration | Start | Finish | Complete | Status |
| --- | --- | --- | --- | --- | --- | --- | --- |
| 28 | 14 | **其他系统实施** | 152d | 2023-10-26 | 2024-05-24 | 100% | done |
| 29 | 14.1 | PS系统实施 | 11d | 2023-10-26 | 2023-11-09 | 100% | done |
| 30 | 14.2 | PLM系统实施 | 20d | 2024-04-29 | 2024-05-24 | 100% | done |
| 31 | 14.3 | SRM系统实施 | 11d | 2023-10-26 | 2023-11-09 | 100% | done |
| 32 | 14.4 | 费控系统实施 | 11d | 2023-10-26 | 2023-11-09 | 100% | done |
| 33 | 14.5 | CRM系统实施 | 28d | 2023-11-13 | 2023-12-20 | 100% | done |
